# Cronograma Proyecto EPC - Timing Template

Schedule from MS Project, 2026-03-19 to 2027-02-10.

## Calendars

- Estándar: Mon-Fri 07:00-12:00, 13:00-16:00; Sat-Sun off. Exceptions (off unless hours are given): 2026-03-21 07:00-13:00 (Sabado laboral), 2026-03-23 (San Jose), 2026-04-02 (Jueves Santo), 2026-04-03 (Viernes Santo), 2026-04-04 07:00-13:00 (Sabado laboral), 2026-04-18 07:00-13:00 (Sabado laboral), 2026-05-01 (Dia del Trabajo), 2026-05-02 07:00-13:00 (Sabado laboral), 2026-05-16 07:00-13:00 (Sabado laboral), 2026-05-18 (Ascension), 2026-05-30 07:00-13:00 (Sabado laboral), 2026-06-08 (Corpus Christi), 2026-06-13 07:00-13:00 (Sabado laboral), 2026-06-15 (Sagrado Corazon), 2026-06-27 07:00-13:00 (Sabado laboral), 2026-06-29 (San Pedro y San Pablo), 2026-07-11 07:00-13:00 (Sabado laboral), 2026-07-20 (Independencia), 2026-07-25 07:00-13:00 (Sabado laboral), 2026-08-07 (Batalla de Boyaca), 2026-08-08 07:00-13:00 (Sabado laboral), 2026-08-17 (Asuncion), 2026-08-22 07:00-13:00 (Sabado laboral), 2026-09-05 07:00-13:00 (Sabado laboral), 2026-09-19 07:00-13:00 (Sabado laboral), 2026-10-03 07:00-13:00 (Sabado laboral), 2026-10-12 (Dia de la Raza), 2026-10-17 07:00-13:00 (Sabado laboral), 2026-10-31 07:00-13:00 (Sabado laboral), 2026-11-02 (Todos los Santos), 2026-11-14 07:00-13:00 (Sabado laboral), 2026-11-16 (Independencia de Cartagena), 2026-11-28 07:00-13:00 (Sabado laboral), 2026-12-08 (Inmaculada Concepcion), 2026-12-12 07:00-13:00 (Sabado laboral), 2026-12-25 (Navidad), 2026-12-26 07:00-13:00 (Sabado laboral), 2027-01-01 (Ano Nuevo), 2027-01-09 07:00-13:00 (Sabado laboral), 2027-01-11 (Reyes Magos), 2027-01-23 07:00-13:00 (Sabado laboral), 2027-02-06 07:00-13:00 (Sabado laboral).
- Calendario suministro: Mon-Sun 08:00-12:00, 13:00-18:00.

## Schedule

| ID | WBS | Task | Type | Duration | Start | Finish | Predecessors | Total slack | Free slack | Calendar |
| --- | --- | --- | --- | --- | --- | --- | --- | --- | --- | --- |
| 1 | 1 | **Cronograma Proyecto EPC - Timing Template** |  | 234.97d | 2026-03-19 | 2027-02-10 |  | 0d |  |  |
| 2 | 1.1 | **Hitos Generales del Contrato** |  | 0d | 2026-03-19 | 2026-03-19 |  | 0d |  |  |
| 3 | 1.1.1 | Acta de Inicio | milestone | 0d | 2026-03-19 | 2026-03-19 |  | 0d |  |  |
| 4 | 1.2 | **Estudios de Ingenieria** |  | 37.5d | 2026-03-20 | 2026-05-13 |  | 0d |  |  |
| 5 | 1.2.1 | Estudio Hidrologico |  | 24d | 2026-04-10 | 2026-05-13 | 7SS+13.5d | 17.75d | 16d |  |
| 6 | 1.2.2 | Estudio Geotecnico |  | 24d | 2026-03-25 | 2026-04-29 | 7SS+3.38d | 27.88d | 26.12d |  |
| 7 | 1.2.3 | Estudio Topografico |  | 22d | 2026-03-20 | 2026-04-21 | 3FS+1.12d | 0d |  |  |
| 8 | 1.2.4 | Prueba Pull Out |  | 20d | 2026-04-14 | 2026-05-11 | 3FS+16.88d | 5.38d |  |  |
| 9 | 1.3 | **Ingenieria de detalle** |  | 111.5d | 2026-04-21 | 2026-09-24 |  | 0d |  |  |
| 10 | 1.3.1 | Fase 1 Ingenieria |  | 30d | 2026-04-21 | 2026-06-02 | 7 | 0d |  |  |
| 11 | 1.3.2 | Fase 2 Ingenieria |  | 40d | 2026-06-04 | 2026-07-31 | 10SS+31.5d, 5, 6 | 1.75d | 0d |  |
| 12 | 1.3.3 | Fase 3 Ingenieria |  | 40d | 2026-07-31 | 2026-09-24 | 11 | 70.12d |  |  |
| 13 | 1.4 | **Suministros Equipos Renergeia** |  | 213d | 2026-05-22 | 2026-11-28 |  | 0d |  | Calendario suministro |
| 14 | 1.4.1 | **Suministro Modulos** |  | 135d | 2026-06-05 | 2026-10-03 |  | 50.25d |  | Calendario suministro |
| 15 | 1.4.1.1 | Suministro de modulos |  | 120ed | 2026-06-05 | 2026-10-03 | 10FS+3.38d | 134.62d | 95.12d | Calendario suministro |
| 16 | 1.4.2 | **Suministro de Inversores** |  | 135d | 2026-07-31 | 2026-11-28 |  | 4.12d |  | Calendario suministro |
| 17 | 1.4.2.1 | Envío de material a obra Inversores |  | 120ed | 2026-07-31 | 2026-11-28 | 11 | 9.88d | 0d | Calendario suministro |
| 18 | 1.4.3 | **Suministro de Data Logger** |  | 123.75d | 2026-07-31 | 2026-11-18 |  | 9.12d |  | Calendario suministro |
| 19 | 1.4.3.1 | Envío de material a obra Data Logger de Comunicaciones |  | 110ed | 2026-07-31 | 2026-11-18 | 11 | 24.12d | 0d | Calendario suministro |
| 20 | 1.4.4 | **Suministro de Estructuras** |  | 123.75d | 2026-05-22 | 2026-09-09 |  | 0d |  | Calendario suministro |
| 21 | 1.4.4.1 | Envío de material a obra Estructuras |  | 110ed | 2026-05-22 | 2026-09-09 | 10SS+22.5d, 8FS+3.38d | 0d |  | Calendario suministro |
| 22 | 1.4.5 | **Suministros de Hincas** |  | 123.75d | 2026-05-22 | 2026-09-09 |  | 0d |  | Calendario suministro |
| 23 | 1.4.5.1 | Envío de material a obra Hincas |  | 110ed | 2026-05-22 | 2026-09-09 | 21SS, 8FS+3.38d | 0d |  | Calendario suministro |
| 24 | 1.4.6 | **Suministro de Estación Meteorológica** |  | 59.62d | 2026-07-06 | 2026-08-28 |  | 131.75d |  | Calendario suministro |
| 25 | 1.4.6.1 | OC Estación Meteorológica |  | 3ed | 2026-07-06 | 2026-07-09 | 10FS+22.5d | 351.25d | 0d | Calendario suministro |
| 26 | 1.4.6.2 | Envío de material a obra Estación Meteorológica |  | 50ed | 2026-07-09 | 2026-08-28 | 25 | 351.25d | 0.12d | Calendario suministro |

| ID | WBS | Task | Duration | Start | Finish | Predecessors | Total slack | Free slack | Calendar |
| --- | --- | --- | --- | --- | --- | --- | --- | --- | --- |
| 27 | 1.4.7 | **Suministro de Transformador de SSAA** | 93.38d | 2026-06-05 | 2026-08-27 |  | 62.88d |  | Calendario suministro |
| 28 | 1.4.7.1 | OC Transformador de SSAA | 3ed | 2026-06-05 | 2026-06-08 | 40FS+3.38d | 167.88d | 0d | Calendario suministro |
| 29 | 1.4.7.2 | Envío de material a obra Transformador de SSAA | 80ed | 2026-06-08 | 2026-08-27 | 28 | 335.88d | 0d | Calendario suministro |
| 30 | 1.4.8 | **Suministro de Tablero de SSAA** | 70.88d | 2026-07-02 | 2026-09-03 |  | 119.62d |  | Calendario suministro |
| 31 | 1.4.8.1 | OC Tablero de SSAA | 3ed | 2026-07-02 | 2026-07-05 | 28FS+16.88d | 318.5d | 0d | Calendario suministro |
| 32 | 1.4.8.2 | Envío de material a obra Tablero de SSAA | 60ed | 2026-07-05 | 2026-09-03 | 31 | 318.5d | 0d | Calendario suministro |
| 33 | 1.4.9 | **Suministro de Reconectador** | 93.38d | 2026-06-26 | 2026-09-17 |  | 95.38d |  | Calendario suministro |
| 34 | 1.4.9.1 | OC Reconectador | 3ed | 2026-06-26 | 2026-06-29 | 10FS+16.88d | 254.62d | 0d | Calendario suministro |
| 35 | 1.4.9.2 | Envío de material a obra Reconectador | 80ed | 2026-06-29 | 2026-09-17 | 34 | 254.62d | 32.12d | Calendario suministro |
| 36 | 1.4.10 | **Suministro de Cuarto de control** | 48.38d | 2026-07-31 | 2026-09-12 |  | 76.62d |  | Calendario suministro |
| 37 | 1.4.10.1 | OC Cuarto de control | 3ed | 2026-07-31 | 2026-08-03 | 34SS, 11 | 204.12d | 0d | Calendario suministro |
| 38 | 1.4.10.2 | Envío de material a obra Cuarto de control | 40ed | 2026-08-03 | 2026-09-12 | 37 | 204.12d | 5.88d | Calendario suministro |
| 39 | 1.4.11 | **Suministros de Centro de Transformacion** | 135d | 2026-05-30 | 2026-09-27 |  | 62.88d |  | Calendario suministro |
| 40 | 1.4.11.1 | OC Centro de Transformacion | 3ed | 2026-05-30 | 2026-06-02 | 10SS+28.12d | 167.88d | 0d | Calendario suministro |
| 41 | 1.4.11.2 | Envío de material a obra Centro de Transformacion | 117ed | 2026-06-02 | 2026-09-27 | 40 | 225d | 2.5d | Calendario suministro |
| 42 | 1.4.12 | **Suministro de Cable de cobre desnudo (Malla Tierra)** | 39.38d | 2026-06-24 | 2026-07-29 |  | 63.88d |  | Calendario suministro |
| 43 | 1.4.12.1 | OC Cable de cobre desnudo (Malla Tierra) | 3ed | 2026-06-24 | 2026-06-27 | 28FS+11.25d | 170.75d | 0d | Calendario suministro |
| 44 | 1.4.12.2 | Envío de material a obra Cable de cobre desnudo (Malla Tierra) | 32ed | 2026-06-27 | 2026-07-29 | 43 | 170.75d | 110.87d | Calendario suministro |
| 45 | 1.4.13 | **Suministro de Cable MT** | 59.62d | 2026-06-30 | 2026-08-22 |  | 92.62d |  | Calendario suministro |
| 46 | 1.4.13.1 | OC Cable MT | 3ed | 2026-06-30 | 2026-07-03 | 43FS+1.12d | 248.12d | 0d | Calendario suministro |
| 47 | 1.4.13.2 | Envío de material a obra Cable MT | 50ed | 2026-07-03 | 2026-08-22 | 46 | 302.88d | 0d | Calendario suministro |
| 48 | 1.4.14 | **Suministro de Cable BT** | 57.38d | 2026-07-09 | 2026-08-29 |  | 92.5d |  | Calendario suministro |
| 49 | 1.4.14.1 | OC Cable BT | 3ed | 2026-07-09 | 2026-07-12 | 46FS+3.38d | 246.25d | 0d | Calendario suministro |
| 50 | 1.4.14.2 | Envío de material a obra Cable BT | 48ed | 2026-07-12 | 2026-08-29 | 49 | 269.75d | 5.75d | Calendario suministro |

| ID | WBS | Task | Duration | Start | Finish | Predecessors | Total slack | Free slack | Calendar |
| --- | --- | --- | --- | --- | --- | --- | --- | --- | --- |
| 51 | 1.4.15 | **Suministro de Cable Solar** | 52.88d | 2026-07-12 | 2026-08-28 |  | 92.5d |  | Calendario suministro |
| 52 | 1.4.15.1 | OC Cable Solar | 3ed | 2026-07-12 | 2026-07-15 | 49 | 246.25d | 0d | Calendario suministro |
| 53 | 1.4.15.2 | Envío de material a obra Cable Solar | 44ed | 2026-07-15 | 2026-08-28 | 52 | 270d | 0d | Calendario suministro |
| 54 | 1.4.16 | **Suministro de CCTV** | 115.88d | 2026-08-12 | 2026-11-23 |  | 18.12d |  | Calendario suministro |
| 55 | 1.4.16.1 | OC CCTV | 3ed | 2026-08-12 | 2026-08-15 | 19SS+7.88d | 48.12d | 0d | Calendario suministro |
| 56 | 1.4.16.2 | Envío de material a obra CCTV | 100ed | 2026-08-15 | 2026-11-23 | 55 | 48.12d | 0d | Calendario suministro |
| 57 | 1.4.17 | **Suministro de Fibra Optica** | 30.38d | 2026-09-01 | 2026-09-28 |  | 91.12d |  | Calendario suministro |
| 58 | 1.4.17.1 | OC Fibra Optica | 3ed | 2026-09-01 | 2026-09-04 | 52FS+33.75d | 243d | 0d | Calendario suministro |
| 59 | 1.4.17.2 | Envío de material a obra Fibra Optica | 24ed | 2026-09-04 | 2026-09-28 | 58 | 243d | 0d | Calendario suministro |
| 60 | 1.4.18 | **Suministro de Cerramiento Perimetral** | 40.5d | 2026-06-11 | 2026-07-17 |  | 134.88d |  | Calendario suministro |
| 61 | 1.4.18.1 | OC Cerramiento Perimetral | 3ed | 2026-06-11 | 2026-06-14 | 10FS+5.62d | 359.75d | 0d | Calendario suministro |
| 62 | 1.4.18.2 | Envío de material a obra Cerramiento Perimetral | 33ed | 2026-06-14 | 2026-07-17 | 61 | 359.75d | 0d | Calendario suministro |
| 63 | 1.4.19 | **Elementos Conexiones Electricas** | 58d | 2026-07-22 | 2026-09-11 |  | 113.5d |  | Calendario suministro |
| 64 | 1.4.19.1 | Premoldeados MT | 20ed | 2026-08-22 | 2026-09-11 | 47 | 302.88d | 74.25d | Calendario suministro |
| 65 | 1.4.19.2 | MC4 | 37ed | 2026-07-22 | 2026-08-28 | 53FF | 309.25d |  | Calendario suministro |
| 66 | 1.5 | **Construccion Planta** | 203.62d | 2026-03-20 | 2026-12-30 |  | 5.25d |  |  |
| 67 | 1.5.1 | **Obras Civiles General** | 187.25d | 2026-03-20 | 2026-12-09 |  | 5.25d |  |  |
| 68 | 1.5.1.1 | Análisis previo | 3d | 2026-03-20 | 2026-03-25 | 3FS+1.12d | 5.25d | 0d |  |
| 69 | 1.5.1.2 | Movilización | 5d | 2026-03-25 | 2026-04-01 | 68 | 5.25d | 0d |  |
| 70 | 1.5.1.3 | Adecuacion y Vias de acceso | 30d | 2026-04-04 | 2026-05-15 | 69FS+1.12d | 5.25d | 0d |  |
| 71 | 1.5.1.4 | Roceria | 70d | 2026-05-20 | 2026-08-27 | 70FS+3.38d | 5.25d | 0d |  |
| 72 | 1.5.1.5 | Cerramiento perimetral | 30d | 2026-07-17 | 2026-08-28 | 62, 70FS+22.5d | 86.75d | 73.38d |  |
| 73 | 1.5.1.6 | Acondicionamiento del terreno | 15d | 2026-05-22 | 2026-06-12 | 70FS+4.5d | 59.12d | 53.88d |  |
| 74 | 1.5.1.7 | Construccion de canalizaciones de cables | 30d | 2026-08-14 | 2026-09-23 | 70, 77FS+11.25d | 15.38d | 0d |  |
| 75 | 1.5.1.8 | Construccion de Cajas electricas | 30d | 2026-08-19 | 2026-09-28 | 74SS+2.25d | 60.12d | 0d |  |
| 76 | 1.5.1.9 | Construccion de vias internas | 12d | 2026-11-20 | 2026-12-09 | 87FS+3.38d | 13.38d | 0d |  |
| 77 | 1.5.1.10 | Cimentación Centro de transformacion, Estacion M. y ETC | 40d | 2026-06-02 | 2026-07-29 | 70, 10 | 15.38d | 0d |  |
| 78 | 1.5.1.11 | Cierre de canaletas y canalizaciones de cables | 20d | 2026-09-07 | 2026-10-02 | 74FF+7d | 60.38d | 47d |  |
| 79 | 1.5.1.12 | Excavaciones y uniones malla tierra general | 20d | 2026-09-04 | 2026-09-30 | 74SS+15d | 62.38d | 49d |  |
| 80 | 1.5.1.13 | Drenajes | 25d | 2026-07-29 | 2026-09-03 | 77 | 83.62d | 70.25d |  |

| ID | WBS | Task | Duration | Start | Finish | Predecessors | Total slack | Free slack |
| --- | --- | --- | --- | --- | --- | --- | --- | --- |
| 81 | 1.5.2 | **Obras Mecanicas** | 76d | 2026-08-27 | 2026-12-10 |  | 5.25d |  |
| 82 | 1.5.2.1 | Replanteo de Hincas | 7d | 2026-08-27 | 2026-09-05 | 73, 71 | 5.25d |  |
| 83 | 1.5.2.2 | Distribucion Hincas | 10d | 2026-09-14 | 2026-09-25 | 23FS+2.25d, 82 | 0d |  |
| 84 | 1.5.2.3 | Hincado | 22d | 2026-09-21 | 2026-10-20 | 83SS+5.62d, 82 | 0d |  |
| 85 | 1.5.2.4 | Distribucion de Estructuras | 11d | 2026-10-06 | 2026-10-21 | 84SS+12.38d, 21FS+2d | 0d |  |
| 86 | 1.5.2.5 | Instalacion de Estructuras | 19d | 2026-10-21 | 2026-11-17 | 85SS+10.12d | 0d |  |
| 87 | 1.5.2.6 | Distribucion de Modulos | 9d | 2026-11-04 | 2026-11-17 | 86SS+10d, 15 | 9.12d | 0d |
| 88 | 1.5.2.7 | Instalacion de Modulos | 20d | 2026-11-11 | 2026-12-10 | 87SS+5.62d | 9.12d | 0d |
| 89 | 1.5.3 | **Equipos Principales** | 88.38d | 2026-08-27 | 2026-12-28 |  | 2.5d |  |
| 90 | 1.5.3.1 | Instalacion de Transformador SSAA | 2d | 2026-08-27 | 2026-08-31 | 29 | 81.88d | 3.5d |
| 91 | 1.5.3.2 | Instalacion de Inversores | 15d | 2026-12-07 | 2026-12-28 | 86SS+5d, 17FS+5.62d | 2.5d |  |
| 92 | 1.5.3.3 | Instalacion Estacion Meteorologica | 5d | 2026-08-28 | 2026-09-04 | 77SS+35d, 26 | 85.12d |  |
| 93 | 1.5.3.4 | Montaje Cuarto de control | 5d | 2026-09-14 | 2026-09-18 | 77SS+22.5d, 38 | 49d | 42.88d |
| 94 | 1.5.3.5 | Data Logger | 9d | 2026-11-18 | 2026-11-30 | 93, 19 | 6.12d |  |
| 95 | 1.5.3.6 | CCTV | 15d | 2026-11-24 | 2026-12-14 | 56FS+1.12d | 11.88d |  |
| 96 | 1.5.3.7 | Instalacion de Tablero SSAA | 3d | 2026-09-04 | 2026-09-08 | 90, 32FS+1d | 78.37d | 16.25d |
| 97 | 1.5.3.8 | Montaje Centro de transformacion | 7d | 2026-09-28 | 2026-10-06 | 77SS+22.5d, 41, 35 | 54.25d | 0d |
| 98 | 1.5.4 | **Obras Electricas** | 82.75d | 2026-08-31 | 2026-12-21 |  | 7d |  |
| 99 | 1.5.4.1 | Cable Malla Tierra | 70d | 2026-09-04 | 2026-12-10 | 74SS+15d, 44 | 15.38d |  |
| 100 | 1.5.4.2 | Cable MT | 6d | 2026-09-14 | 2026-09-21 | 47, 74SS+12.38d, 101SS+11.25d | 65.5d | 11.25d |
| 101 | 1.5.4.3 | Cable BT | 14d | 2026-08-31 | 2026-09-17 | 50, 74SS+2.25d | 65.5d | 0d |
| 102 | 1.5.4.4 | Cable Solar | 18d | 2026-11-26 | 2026-12-21 | 53, 86FS+6.75d | 0d |  |
| 103 | 1.5.4.5 | Cable SSA | 2d | 2026-09-28 | 2026-09-30 | 90, 96FF, 75 | 62.12d | 0d |
| 104 | 1.5.4.6 | Fibra Optica | 3d | 2026-09-28 | 2026-10-01 | 59, 75 | 59.5d | 0d |

| ID | WBS | Task | Type | Duration | Start | Finish | Predecessors | Total slack | Free slack |
| --- | --- | --- | --- | --- | --- | --- | --- | --- | --- |
| 105 | 1.5.5 | **Conexionado de Cables** |  | 73.75d | 2026-09-17 | 2026-12-28 |  | 0d |  |
| 106 | 1.5.5.1 | Conexionado MT |  | 5d | 2026-10-06 | 2026-10-14 | 100, 64, 97 | 54.25d |  |
| 107 | 1.5.5.2 | Conexionado BT |  | 7d | 2026-09-17 | 2026-09-25 | 101 | 66.75d |  |
| 108 | 1.5.5.3 | Conexionado Solar |  | 14d | 2026-12-09 | 2026-12-28 | 102SS+9d, 65, 94 | 0d |  |
| 109 | 1.5.5.4 | Conexionado SSAA |  | 2d | 2026-09-30 | 2026-10-02 | 103 | 62.12d |  |
| 110 | 1.5.5.5 | Conexionado Fibra Optica |  | 3d | 2026-10-01 | 2026-10-05 | 104 | 59.5d |  |
| 111 | 1.5.6 | **EPC Linea de Transmision** |  | 80.12d | 2026-07-31 | 2026-11-19 |  | 36.22d |  |
| 112 | 1.5.6.1 | Diseño |  | 20d | 2026-07-31 | 2026-08-28 | 11 | 36.22d | 0d |
| 113 | 1.5.6.2 | Suministro linea de transmision |  | 30d | 2026-08-28 | 2026-10-07 | 112 | 36.22d | 0d |
| 114 | 1.5.6.3 | Construcción |  | 20d | 2026-10-05 | 2026-10-31 | 113SS+28.12d | 36.22d | 0d |
| 115 | 1.5.6.4 | Pruebas de la linea |  | 7d | 2026-11-03 | 2026-11-11 | 114 | 36.22d | 0d |
| 116 | 1.5.6.5 | Certificación RETIE |  | 5d | 2026-11-12 | 2026-11-19 | 115 | 36.22d | 30d |
| 117 | 1.5.7 | **Pruebas** |  | 16.38d | 2026-12-09 | 2026-12-30 |  | 0d |  |
| 118 | 1.5.7.1 | Finalizacion Obras Civiles |  | 3d | 2026-12-09 | 2026-12-12 | 70, 72, 73, 74, 75, 77, 78, 79, 80, 76 | 13.38d |  |
| 119 | 1.5.7.2 | Finalizacion de montaje estructura y modulos |  | 6d | 2026-12-10 | 2026-12-17 | 86, 88 | 9.12d | 8d |
| 120 | 1.5.7.3 | Finalizacion Obras Electricas |  | 2d | 2026-12-29 | 2026-12-30 | 106, 107, 108, 109, 110 | 0d |  |
| 121 | 1.6 | **Fecha Fin Construccion** |  | 0d | 2026-12-30 | 2026-12-30 |  | 0d |  |
| 122 | 1.6.1 | FIN DE CONSTRUCCION | milestone | 0d | 2026-12-30 | 2026-12-30 | 114, 118, 119, 120, 91, 92, 99, 12, 95 | 0d |  |
| 123 | 1.7 | Entrega De Planos Red Line y As built |  | 6.22d | 2026-12-31 | 2027-01-09 | 122 | 0d |  |
| 124 | 1.8 | Entrega de Dossier |  | 6.22d | 2026-12-31 | 2027-01-09 | 122 | 0d |  |
| 125 | 1.9 | ENERGIZACION | milestone | 0d | 2026-12-30 | 2026-12-30 | 116, 122, 119 | 6.22d |  |
| 126 | 1.10 | CULMINACION MECANICA | milestone | 0d | 2026-12-30 | 2026-12-30 | 119FS+1.12d, 120 | 6.22d |  |
| 127 | 1.11 | CULMINACION SUSTANCIAL DEL PROYECTO |  | 12d | 2027-01-09 | 2027-01-26 | 125, 126, 123, 124 | 0d |  |
| 128 | 1.12 | ACEPTACION FINAL |  | 12d | 2027-01-26 | 2027-02-10 | 127 | 0d |  |
